How a schedule from MS Project XML changed from version to version. A marks actual dates.

## Version 1 (data date 2026-09-16, saved 2026-09-19, file 20260918-PLAN-PMO-70418 GRM - HU Postergadas a Garantía (Inicio 11-Sep).xml)

Note of the change: Message 443615396143392 - 1789863213

| ID | WBS | Task | Duration | Start | Finish | Predecessors | Complete | Total float |
| --- | --- | --- | --- | --- | --- | --- | --- | --- |
| 1 | 1 | **GRM** | 63.2d | 2026-09-04 A | 2026-12-04 |  | 34% | 0d |
| 2 | 2 | **PAP 1** | 1d | 2026-09-04 A | 2026-09-04 A |  | 100% |  |
| 3 |  | Pase Producción | 1d | 2026-09-04 A | 2026-09-04 A |  | 100% |  |
| 4 | 3 | **Fase de Garantía** | 5d | 2026-09-04 | 2026-09-10 |  | 94% | 0d |
| 5 | 3.1 | **Atenciones de Incidencias PAP** | 4d | 2026-09-04 | 2026-09-10 |  | 94% |  |
| 6 |  | Desarrollo | 4d | 2026-09-07 A | 2026-09-10 A | 3 | 100% |  |
| 7 |  | Pruebas Internas | 4d | 2026-09-07 A | 2026-09-10 A | 3 | 100% |  |
| 8 |  | Entrega y despliegue en QA | 4d | 2026-09-07 A | 2026-09-10 | 3 | 90% |  |
| 9 |  | Ejecucion de pruebas | 4d | 2026-09-07 A | 2026-09-10 | 3 | 90% |  |
| 10 |  | Reuniones de Revisión UAT | 4d | 2026-09-07 A | 2026-09-10 | 3 | 90% |  |
| 11 | 4 | **HU Postergadas Fase Garantía** | 58.2d | 2026-09-11 A | 2026-12-04 |  | 29% | 0d |
| 12 | 5 | **1 Caso Gobierno OK con OBS** | 8d | 2026-09-11 A | 2026-09-23 A |  | 100% |  |
| 13 | 5.1 | **OK con OBS: G_12_ RI_49.2** | 8d | 2026-09-11 A | 2026-09-23 A |  | 100% |  |
| 14 |  | Medición de Esfuerzo | 0d | 2026-09-11 A | 2026-09-11 A | 10 | 100% |  |
| 15 |  | Análisis, Revision y Aprobacion | 0d | 2026-09-11 A | 2026-09-11 A | 10 | 100% |  |
| 16 |  | Desarrollo | 1d | 2026-09-11 A | 2026-09-14 A | 10 | 100% |  |
| 17 |  | Pruebas Internas | 1d | 2026-09-14 A | 2026-09-15 A | 15 | 100% |  |
| 18 |  | Entrega y despliegue en QA | 1d | 2026-09-16 A | 2026-09-17 A | 17 | 100% |  |
| 19 |  | Induccion de HU | 1d | 2026-09-16 A | 2026-09-17 A | 17 | 100% |  |
| 20 |  | Ejecucion de pruebas ciclo 1 | 1d | 2026-09-16 A | 2026-09-17 A | 17 | 100% |  |
| 21 |  | Reuniones de Revisión UAT | 1d | 2026-09-16 A | 2026-09-17 A | 17 | 100% |  |
| 22 |  | Correcciones y despliegue | 1d | 2026-09-21 A | 2026-09-22 A | 21 | 100% |  |
| 23 |  | Ejecucion de pruebas ciclo 2 | 1d | 2026-09-23 A | 2026-09-23 A | 22 | 100% |  |
| 24 | 6 | **2 Casos Documentación OK con OBS** | 7d | 2026-09-11 A | 2026-09-22 |  | 85% | 0d |
| 25 | 6.1 | **OK con OBS: 1.1, 4.1** | 7d | 2026-09-11 A | 2026-09-22 |  | 85% | 0d |
| 26 |  | Medición de Esfuerzo | 0d | 2026-09-11 A | 2026-09-11 A | 10 | 100% |  |
| 27 |  | Análisis, Revision y Aprobacion | 1d | 2026-09-11 A | 2026-09-11 A | 10 | 100% |  |
| 28 |  | Desarrollo | 2d | 2026-09-14 A | 2026-09-15 A | 27 | 100% |  |
| 29 |  | Pruebas Internas | 1d | 2026-09-16 A | 2026-09-16 A | 28 | 100% |  |
| 30 |  | Entrega y despliegue en QA | 1d | 2026-09-17 A | 2026-09-17 A | 29 | 100% |  |
| 31 |  | Induccion de HU | 1d | 2026-09-17 A | 2026-09-17 A | 29 | 100% |  |
| 32 |  | Ejecucion de pruebas ciclo 1 | 1d | 2026-09-17 A | 2026-09-17 A | 29 | 100% |  |
| 33 |  | Reuniones de Revisión UAT | 1d | 2026-09-17 A | 2026-09-17 A | 29 | 100% |  |
| 34 |  | Correcciones y despliegue | 1d | 2026-09-21 A | 2026-09-21 | 30 | 50% |  |
| 35 |  | Ejecucion de pruebas ciclo 2 | 1d | 2026-09-22 | 2026-09-22 | 34 |  |  |
| 36 | 7 | **3 Casos Incidencias OK con OBS** | 9.5d | 2026-09-11 A | 2026-09-25 |  | 82% | 48.7d |
| 37 | 7.1 | **OK con OBS: 5.3, 7.1, 9.3** | 9.5d | 2026-09-11 A | 2026-09-25 |  | 82% | 48.7d |
| 38 |  | Medición de Esfuerzo | 1d | 2026-09-11 A | 2026-09-11 A |  | 100% |  |
| 39 |  | Análisis, Revision y Aprobacion | 1d | 2026-09-11 A | 2026-09-11 A |  | 100% |  |
| 40 |  | Desarrollo | 2d | 2026-09-14 A | 2026-09-15 A | 39 | 100% |  |
| 41 |  | Pruebas Internas | 1d | 2026-09-15 A | 2026-09-15 A | 40 | 100% |  |
| 42 |  | Entrega y despliegue en QA | 1d | 2026-09-16 A | 2026-09-16 A | 41 | 100% |  |
| 43 |  | Induccion de HU | 1d | 2026-09-16 A | 2026-09-16 A | 41 | 100% |  |
| 44 |  | Ejecucion de pruebas ciclo 1 | 1d | 2026-09-17 A | 2026-09-17 A | 43 | 100% |  |
| 45 |  | Reuniones de Revisión UAT | 1d | 2026-09-21 A | 2026-09-21 A | 44 | 100% |  |
| 46 |  | Correcciones y despliegue | 1d | 2026-09-22 | 2026-09-24 | 45 |  | 48.7d |
| 47 |  | Ejecucion de pruebas ciclo 2 | 1d | 2026-09-24 | 2026-09-25 | 46 |  | 48.7d |
| 48 | 8 | **3 Casos Filiales OK con OBS** | 9d | 2026-09-11 A | 2026-09-24 A |  | 100% |  |
| 49 | 8.1 | **OK con OBS: 2.1, 10.2, 11.2** | 9d | 2026-09-11 A | 2026-09-24 A |  | 100% |  |
| 50 |  | Medición de Esfuerzo | 1d | 2026-09-11 A | 2026-09-11 A |  | 100% |  |
| 51 |  | Análisis, Revision y Aprobacion | 1d | 2026-09-14 A | 2026-09-14 A | 50 | 100% |  |
| 52 |  | Desarrollo | 2d | 2026-09-14 A | 2026-09-15 A | 50 | 100% |  |
| 53 |  | Pruebas Internas | 1d | 2026-09-16 A | 2026-09-16 A | 52 | 100% |  |
| 54 |  | Entrega y despliegue en QA | 1d | 2026-09-17 A | 2026-09-17 A | 53 | 100% |  |
| 55 |  | Induccion de HU | 1d | 2026-09-17 A | 2026-09-17 A | 53 | 100% |  |
| 56 |  | Ejecucion de pruebas ciclo 1 | 1d | 2026-09-21 A | 2026-09-21 A | 55 | 100% |  |
| 57 |  | Reuniones de Revisión UAT | 1d | 2026-09-22 A | 2026-09-22 A | 56 | 100% |  |
| 58 |  | Correcciones y despliegue | 1d | 2026-09-23 A | 2026-09-23 A | 57 | 100% |  |
| 59 |  | Ejecucion de pruebas ciclo 2 | 1d | 2026-09-24 A | 2026-09-24 A | 58 | 100% |  |
| 60 | 9 | **4 Casos Información inventario - OK con OBS** | 6d | 2026-09-22 A | 2026-09-29 A |  | 100% |  |
| 61 | 9.1 | **OK con OBS: II_10.2, II_13.2** | 6d | 2026-09-22 A | 2026-09-29 A |  | 100% |  |
| 62 |  | Medición de Esfuerzo | 1d | 2026-09-22 A | 2026-09-22 A | 58 | 100% |  |
| 63 |  | Análisis, Revision y Aprobacion | 1d | 2026-09-22 A | 2026-09-22 A | 58 | 100% |  |
| 64 |  | Desarrollo | 2d | 2026-09-23 A | 2026-09-24 A | 63 | 100% |  |
| 65 |  | Pruebas Internas | 1d | 2026-09-23 A | 2026-09-23 A | 63 | 100% |  |
| 66 |  | Entrega y despliegue en QA | 1d | 2026-09-25 A | 2026-09-25 A | 64 | 100% |  |
| 67 |  | Induccion de HU | 1d | 2026-09-25 A | 2026-09-25 A | 64 | 100% |  |
| 68 |  | Ejecucion de pruebas ciclo 1 | 1d | 2026-09-25 A | 2026-09-25 A | 64 | 100% |  |
| 69 |  | Reuniones de Revisión UAT | 1d | 2026-09-25 A | 2026-09-25 A | 64 | 100% |  |
| 70 |  | Correcciones y despliegue | 1d | 2026-09-28 A | 2026-09-28 A | 69 | 100% |  |

| ID | WBS | Task | Duration | Start | Finish | Predecessors | Complete | Total float | Constraint |
| --- | --- | --- | --- | --- | --- | --- | --- | --- | --- |
| 71 |  | Ejecucion de pruebas ciclo 2 | 1d | 2026-09-29 A | 2026-09-29 A | 70 | 100% |  |  |
| 72 | 10 | **14 Casos Validación- OK con OBS** | 10d | 2026-09-21 A | 2026-10-02 |  | 17% | 43.2d |  |
| 73 | 10.1 | **OK con OBS: V_30.1, V_36.1** | 10d | 2026-09-21 A | 2026-10-02 |  | 17% | 43.2d |  |
| 74 |  | Medición de Esfuerzo | 1d | 2026-09-21 A | 2026-09-21 A |  | 100% |  |  |
| 75 |  | Análisis, Revision y Aprobacion | 1d | 2026-09-21 A | 2026-09-21 A |  | 100% |  |  |
| 76 |  | Desarrollo | 2d | 2026-09-22 | 2026-09-23 | 75 |  | 0d | start no earlier than 2025-07-21 |
| 77 |  | Pruebas Internas | 1d | 2026-09-24 | 2026-09-24 | 76 |  | 0d |  |
| 78 |  | Entrega y despliegue en QA | 1d | 2026-09-25 | 2026-09-25 | 77 |  | 48.2d |  |
| 79 |  | Induccion de HU | 1d | 2026-09-25 | 2026-09-25 | 77 |  | 10.2d |  |
| 80 |  | Ejecucion de pruebas ciclo 1 | 1d | 2026-09-28 | 2026-09-28 | 79 |  | 10.2d |  |
| 81 |  | Reuniones de Revisión UAT | 1d | 2026-09-29 | 2026-09-29 | 80 |  | 10.2d |  |
| 82 |  | Correcciones y despliegue | 2d | 2026-09-30 | 2026-10-01 | 81 |  | 10.2d |  |
| 83 |  | Ejecucion de pruebas ciclo 2 | 1d | 2026-10-02 | 2026-10-02 | 82 |  | 43.2d |  |
| 84 | 13 | **27 Casos Registro Información** | 34d | 2026-10-02 | 2026-11-19 | 82 |  | 10.2d |  |
| 85 | 14 | **Hus Garantía: RI_1, RI_3, RI_4, RI_49 (RI_49.1), RI_63-67** | 34d | 2026-10-02 | 2026-11-19 | 82 |  | 10.2d |  |
| 86 |  | Medición de Esfuerzo | 1d | 2026-10-02 | 2026-10-02 | 82 |  | 43.2d |  |
| 87 |  | Análisis, Revision y Aprobacion | 1d | 2026-10-02 | 2026-10-02 | 82 |  | 43.2d |  |
| 88 |  | Desarrollo | 25d | 2026-10-02 | 2026-11-06 | 82 |  | 10.2d |  |
| 89 |  | Pruebas Internas | 1d | 2026-11-09 | 2026-11-09 | 88 |  | 10.2d |  |
| 90 |  | Entrega y despliegue en QA | 1d | 2026-11-10 | 2026-11-10 | 89 |  | 10.2d |  |
| 91 |  | Induccion de HU | 1d | 2026-11-11 | 2026-11-11 | 90 |  | 10.2d |  |
| 92 |  | Ejecucion de pruebas ciclo 1 | 3d | 2026-11-12 | 2026-11-16 | 91 |  | 10.2d |  |
| 93 |  | Reuniones de Revisión UAT | 1d | 2026-11-17 | 2026-11-17 | 92 |  | 10.2d |  |
| 94 |  | Correcciones y despliegue | 1d | 2026-11-18 | 2026-11-18 | 93 |  | 10.2d |  |
| 95 |  | Ejecucion de pruebas ciclo 2 | 1d | 2026-11-19 | 2026-11-19 | 94 |  | 10.2d |  |
| 96 | 11 | **27 Casos Seguimiento y Control** | 33d | 2026-09-17 A | 2026-11-04 | 42 | 11% | 21.2d |  |
| 97 | 11.1 | **OK con OBS: SC_8.4, SC_12.2, SC_29.1,SC_ 47.1** | 10d | 2026-09-17 A | 2026-10-01 | 42 | 15% | 44.2d |  |
| 98 |  | Medición de Esfuerzo | 1d | 2026-09-17 A | 2026-09-17 A | 42 | 100% |  |  |
| 99 |  | Análisis, Revision y Aprobacion | 1d | 2026-09-17 A | 2026-09-17 A | 42 | 100% |  |  |
| 100 |  | Desarrollo | 4d | 2026-09-17 | 2026-09-23 | 42 |  | 0d |  |
| 101 |  | Pruebas Internas | 1d | 2026-09-24 | 2026-09-24 | 100 |  | 0d |  |
| 102 |  | Entrega y despliegue en QA | 1d | 2026-09-25 | 2026-09-25 | 101 |  | 48.2d |  |
| 103 |  | Induccion de HU | 1d | 2026-09-25 | 2026-09-25 | 101 |  | 44.2d |  |
| 104 |  | Ejecucion de pruebas ciclo 1 | 1d | 2026-09-28 | 2026-09-28 | 103 |  | 44.2d |  |
| 105 |  | Reuniones de Revisión UAT | 1d | 2026-09-29 | 2026-09-29 | 104 |  | 44.2d |  |
| 106 |  | Correcciones y despliegue | 1d | 2026-09-30 | 2026-09-30 | 105 |  | 44.2d |  |
| 107 |  | Ejecucion de pruebas ciclo 2 | 1d | 2026-10-01 | 2026-10-01 | 106 |  | 44.2d |  |
| 108 | 11.2 | **NOK: SC_3.1, SC_3.7, SC_15.4, SC_30.1, SC_30.2, SC_31.2** | 9d | 2026-09-25 A | 2026-10-07 | 100 | 15% | 40.2d |  |
| 109 |  | Medición de Esfuerzo | 1d | 2026-09-25 A | 2026-09-25 A | 101 | 100% |  |  |
| 110 |  | Análisis, Revision y Aprobacion | 1d | 2026-09-25 A | 2026-09-25 A | 101 | 100% |  |  |
| 111 |  | Desarrollo | 4d | 2026-09-25 | 2026-09-30 | 101 |  | 0d |  |
| 112 |  | Pruebas Internas | 1d | 2026-10-01 | 2026-10-01 | 111 |  | 44.2d |  |
| 113 |  | Entrega y despliegue en QA | 1d | 2026-10-01 | 2026-10-01 | 111 |  | 44.2d |  |
| 114 |  | Induccion de HU | 1d | 2026-10-01 | 2026-10-01 | 111 |  | 40.2d |  |
| 115 |  | Ejecucion de pruebas ciclo 1 | 1d | 2026-10-02 | 2026-10-02 | 114 |  | 40.2d |  |
| 116 |  | Reuniones de Revisión UAT | 1d | 2026-10-05 | 2026-10-05 | 115 |  | 40.2d |  |
| 117 |  | Correcciones y despliegue | 1d | 2026-10-06 | 2026-10-06 | 116 |  | 40.2d |  |
| 118 |  | Ejecucion de pruebas ciclo 2 | 1d | 2026-10-07 | 2026-10-07 | 117 |  | 40.2d |  |
| 119 | 11.3 | **HU Garantía: SC_2.5, SC_6.1, SC_8.6, SC_14.3, SC_19.1, SC_19.2, SC_23.1, SC_24.4, SC_24.5, SC_26.1, SC_34.1, SC_38.4, SC_41.2, SC_42.2** | 24d | 2026-10-01 A | 2026-11-04 | 111 | 7% | 21.2d |  |
| 120 |  | Medición de Esfuerzo | 1d | 2026-10-01 A | 2026-10-01 A | 111 | 100% |  |  |
| 121 |  | Análisis, Revision y Aprobacion | 1d | 2026-10-01 A | 2026-10-01 A | 111 | 100% |  |  |
| 122 |  | Desarrollo | 15d | 2026-10-01 | 2026-10-22 | 111 |  | 21.2d |  |
| 123 |  | Pruebas Internas | 1d | 2026-10-23 | 2026-10-23 | 122 |  | 21.2d |  |
| 124 |  | Entrega y despliegue en QA | 1d | 2026-10-26 | 2026-10-26 | 123 |  | 28.2d |  |
| 125 |  | Induccion de HU | 1d | 2026-10-26 | 2026-10-26 | 123 |  | 21.2d |  |
| 126 |  | Ejecucion de pruebas ciclo 1 | 2d | 2026-10-27 | 2026-10-28 | 125 |  | 21.2d |  |
| 127 |  | Reuniones de Revisión UAT | 1d | 2026-10-29 | 2026-10-29 | 126 |  | 21.2d |  |
| 128 |  | Correcciones y despliegue | 2d | 2026-10-30 | 2026-11-02 | 127 |  | 21.2d |  |
| 129 |  | Ejecucion de pruebas ciclo 2 | 2d | 2026-11-03 | 2026-11-04 | 128 |  | 21.2d |  |
| 130 | 12 | **47 Casos Mejoras trasnversales** | 48.2d | 2026-09-23 A | 2026-12-01 |  | 10% | 3d |  |
| 131 | 12.1 | **NOK: MT_14.2, MT_14.3, MT_15.1, MT_15.2** | 7.2d | 2026-09-23 A | 2026-10-02 |  | 38% | 44d |  |
| 132 |  | Medición de Esfuerzo | 1d | 2026-09-23 A | 2026-09-23 A | 77 | 100% |  |  |
| 133 |  | Análisis, Revision y Aprobacion | 1d | 2026-09-23 A | 2026-09-23 A | 77 | 100% |  |  |
| 134 |  | Desarrollo | 1d | 2026-09-23 A | 2026-09-25 | 77 | 90% | 0d |  |
| 135 |  | Pruebas Internas | 1d | 2026-09-24 A | 2026-09-25 | 134 | 90% | 0d |  |
| 136 |  | Entrega y despliegue en QA | 1d | 2026-09-25 | 2026-09-28 | 135 |  | 48d |  |
| 137 |  | Induccion de HU | 1d | 2026-09-25 | 2026-09-28 | 135 |  | 0d |  |
| 138 |  | Ejecucion de pruebas ciclo 1 | 1d | 2026-09-28 | 2026-09-29 | 137 |  | 0d |  |
| 139 |  | Reuniones de Revisión UAT | 1d | 2026-09-29 | 2026-09-30 | 138 |  | 0d |  |
| 140 |  | Correcciones y despliegue | 1d | 2026-09-30 | 2026-10-01 | 139 |  | 44d |  |

| ID | WBS | Task | Duration | Start | Finish | Predecessors | Complete | Total float |
| --- | --- | --- | --- | --- | --- | --- | --- | --- |
| 141 |  | Ejecucion de pruebas ciclo 2 | 1d | 2026-10-01 | 2026-10-02 | 140 |  | 44d |
| 142 | 12.2 | **HU Garantía: MT_11, MT_19, MT_21, MT_25, MT_26, MT_27, MT_29, MT_32, MT_33, MT_38, MT_39** | 43d | 2026-09-30 A | 2026-12-01 | 139 | 4% | 3d |
| 143 |  | Medición de Esfuerzo | 1d | 2026-09-30 A | 2026-10-01 A | 139 | 100% |  |
| 144 |  | Análisis, Revision y Aprobacion | 1d | 2026-09-30 A | 2026-10-01 A | 139 | 100% |  |
| 145 |  | Desarrollo | 28d | 2026-09-30 | 2026-11-10 | 139 |  | 0d |
| 146 |  | Pruebas Internas | 5d | 2026-11-10 | 2026-11-17 | 145 |  | 0d |
| 147 |  | Entrega y despliegue en QA | 1d | 2026-11-17 | 2026-11-18 | 146 |  | 12d |
| 148 |  | Induccion de HU | 1d | 2026-11-17 | 2026-11-18 | 146 |  | 0d |
| 149 |  | Ejecucion de pruebas ciclo 1 | 5d | 2026-11-18 | 2026-11-25 | 148 |  | 0d |
| 150 |  | Reuniones de Revisión UAT | 1d | 2026-11-25 | 2026-11-26 | 149 |  | 3d |
| 151 |  | Correcciones y despliegue | 2d | 2026-11-26 | 2026-11-30 | 150 |  | 3d |
| 152 |  | Ejecucion de pruebas ciclo 2 | 1d | 2026-11-30 | 2026-12-01 | 151 |  | 3d |
| 153 | 15 | **PAP 2** | 0d | 2026-12-01 | 2026-12-01 |  |  | 3d |
| 154 |  | Coordinacion PAP | 0d | 2026-12-01 | 2026-12-01 | 152 |  | 3d |
| 155 |  | Ejecución PAP | 0d | 2026-12-01 | 2026-12-01 | 154 |  | 3d |
| 156 | 16 | **Documentación Actualización** | 7d | 2026-11-25 | 2026-12-04 | 149 |  | 0d |
| 157 |  | Documento Técnica Actualización | 3d | 2026-11-25 | 2026-11-30 | 149 |  | 0d |
| 158 |  | Manual de Usuario Actualización | 3d | 2026-11-30 | 2026-12-03 | 157 |  | 0d |
| 159 |  | Aprobaciones Documentos | 1d | 2026-12-03 | 2026-12-04 | 158 |  | 0d |

## Version 2 (data date 2026-09-16, saved 2026-09-21, file 20260918-PLAN-PMO-70418 GRM - HU Postergadas a Garantía (Inicio 11-Sep).xml)

Note of the change: Message 444249616625921 - 1790012197

Last finish stays 2026-12-04.

Changed:

| ID | Task | Other |
| --- | --- | --- |
| 25 | **OK con OBS: D_1.1, D_4.1** | was named OK con OBS: 1.1, 4.1 |
| 37 | **OK con OBS: IN_5.3, IN_7.1, IN_9.3** | was named OK con OBS: 5.3, 7.1, 9.3 |
| 49 | **OK con OBS: F_2.1, F_10.2, F_11.2** | was named OK con OBS: 2.1, 10.2, 11.2 |

## Version 3 (data date 2026-09-24, saved 2026-09-30, file 20260928-PLAN-PMO-70418 GRM - HU Postergadas a Garantía (Inicio 11-Sep).xml)

Note of the change: Message 447220274733336 - 1790740240

Last finish stays 2026-12-04. Complete tasks 61 → 97.

Changed:

| ID | Task | Start | Finish | Duration | Complete | Total float | Other |
| --- | --- | --- | --- | --- | --- | --- | --- |
| 1 | **GRM** |  |  |  | 34% → 54% |  |  |
| 11 | **HU Postergadas Fase Garantía** |  |  |  | 29% → 50% |  |  |
| 24 | **2 Casos Documentación OK con OBS** |  | 2026-09-22 A |  | 85% → 100% | 0d → none |  |
| 25 | **OK con OBS: 1.1, 4.1** |  | 2026-09-22 A |  | 85% → 100% | 0d → none | was named OK con OBS: D_1.1, D_4.1 |
| 34 | Correcciones y despliegue |  | 2026-09-21 A |  | 50% → 100% |  |  |
| 35 | Ejecucion de pruebas ciclo 2 | 2026-09-22 A | 2026-09-22 A |  | 0% → 100% |  |  |
| 36 | **3 Casos Incidencias OK con OBS** |  | 2026-09-25 A |  | 82% → 100% | 48.7d → none |  |
| 37 | **OK con OBS: 5.3, 7.1, 9.3** |  | 2026-09-25 A |  | 82% → 100% | 48.7d → none | was named OK con OBS: IN_5.3, IN_7.1, IN_9.3 |
| 46 | Correcciones y despliegue | 2026-09-22 A | 2026-09-24 A | 1d → 2.5d | 0% → 100% | 48.7d → none |  |
| 47 | Ejecucion de pruebas ciclo 2 | 2026-09-24 A | 2026-09-25 A |  | 0% → 100% | 48.7d → none |  |
| 49 | **OK con OBS: 2.1, 10.2, 11.2** |  |  |  |  |  | was named OK con OBS: F_2.1, F_10.2, F_11.2 |
| 61 | **OK con OBS: 10.2,13.2 (8.3N/A, 11.1N/A)** |  |  |  |  |  | was named OK con OBS: II_10.2, II_13.2 |
| 72 | **14 Casos Validación- OK con OBS** |  | 2026-10-02 A |  | 17% → 100% | 43.2d → none |  |
| 73 | **OK con OBS: 30.1, 36.1** |  | 2026-10-02 A |  | 17% → 100% | 43.2d → none | was named OK con OBS: V_30.1, V_36.1 |
| 76 | Desarrollo | 2026-09-22 A | 2026-09-23 A |  | 0% → 100% | 0d → none |  |
| 77 | Pruebas Internas | 2026-09-24 A | 2026-09-24 A |  | 0% → 100% | 0d → none |  |
| 78 | Entrega y despliegue en QA | 2026-09-25 A | 2026-09-25 A |  | 0% → 100% | 48.2d → none |  |
| 79 | Induccion de HU | 2026-09-25 A | 2026-09-25 A |  | 0% → 100% | 10.2d → none |  |
| 80 | Ejecucion de pruebas ciclo 1 | 2026-09-28 A | 2026-09-28 A |  | 0% → 100% | 10.2d → none |  |
| 81 | Reuniones de Revisión UAT | 2026-09-29 A | 2026-09-29 A |  | 0% → 100% | 10.2d → none |  |
| 82 | Correcciones y despliegue | 2026-09-30 A | 2026-10-01 A |  | 0% → 100% | 10.2d → none |  |
| 83 | Ejecucion de pruebas ciclo 2 | 2026-10-02 A | 2026-10-02 A |  | 0% → 100% | 43.2d → none |  |
| 85 | **HUs Garantía: 1, 3, 4, 49.1, 63-67** |  |  |  |  |  | was named Hus Garantía: RI_1, RI_3, RI_4, RI_49 (RI_49.1), RI_63-67 |
| 96 | **27 Casos Seguimiento y Control** |  |  |  | 11% → 56% |  |  |
| 97 | **OK con OBS: 8.4, 12.2, 29.1, 47.1** |  | 2026-10-01 A |  | 15% → 100% | 44.2d → none | was named OK con OBS: SC_8.4, SC_12.2, SC_29.1,SC_ 47.1 |
| 100 | Desarrollo | 2026-09-17 A | 2026-09-23 A |  | 0% → 100% | 0d → none |  |
| 101 | Pruebas Internas | 2026-09-24 A | 2026-09-24 A |  | 0% → 100% | 0d → none |  |
| 102 | Entrega y despliegue en QA | 2026-09-25 A | 2026-09-25 A |  | 0% → 100% | 48.2d → none |  |
| 103 | Induccion de HU | 2026-09-25 A | 2026-09-25 A |  | 0% → 100% | 44.2d → none |  |
| 104 | Ejecucion de pruebas ciclo 1 | 2026-09-28 A | 2026-09-28 A |  | 0% → 100% | 44.2d → none |  |
| 105 | Reuniones de Revisión UAT | 2026-09-29 A | 2026-09-29 A |  | 0% → 100% | 44.2d → none |  |
| 106 | Correcciones y despliegue | 2026-09-30 A | 2026-09-30 A |  | 0% → 100% | 44.2d → none |  |
| 107 | Ejecucion de pruebas ciclo 2 | 2026-10-01 A | 2026-10-01 A |  | 0% → 100% | 44.2d → none |  |
| 108 | **NOK: 3.1, 3.7, 15.4, 30.1, 30.2, 31.2** |  | 2026-10-07 A |  | 15% → 100% | 40.2d → none | was named NOK: SC_3.1, SC_3.7, SC_15.4, SC_30.1, SC_30.2, SC_31.2 |
| 111 | Desarrollo | 2026-09-25 A | 2026-09-30 A |  | 0% → 100% | 0d → none |  |
| 112 | Pruebas Internas | 2026-10-01 A | 2026-10-01 A |  | 0% → 100% | 44.2d → none |  |
| 113 | Entrega y despliegue en QA | 2026-10-01 A | 2026-10-01 A |  | 0% → 100% | 44.2d → none |  |
| 114 | Induccion de HU | 2026-10-01 A | 2026-10-01 A |  | 0% → 100% | 40.2d → none |  |
| 115 | Ejecucion de pruebas ciclo 1 | 2026-10-02 A | 2026-10-02 A |  | 0% → 100% | 40.2d → none |  |
| 116 | Reuniones de Revisión UAT | 2026-10-05 A | 2026-10-05 A |  | 0% → 100% | 40.2d → none |  |
| 117 | Correcciones y despliegue | 2026-10-06 A | 2026-10-06 A |  | 0% → 100% | 40.2d → none |  |
| 118 | Ejecucion de pruebas ciclo 2 | 2026-10-07 A | 2026-10-07 A |  | 0% → 100% | 40.2d → none |  |
| 119 | **HU Garantía: 2.5, 6.1, 8.6, 14.3, 19.1, 19.2, 23.1, 24.4, 24.5, 26.1, 34.1, 38.4, 41.2, 42.2** |  |  |  | 7% → 13% |  | was named HU Garantía: SC_2.5, SC_6.1, SC_8.6, SC_14.3, SC_19.1, SC_19.2, SC_23.1, SC_24.4, SC_24.5, SC_26.1, SC_34.1, SC_38.4, SC_41.2, SC_42.2 |
| 122 | Desarrollo | 2026-10-01 A |  |  | 0% → 10% |  |  |
| 130 | **47 Casos Mejoras trasnversales** |  |  |  | 10% → 24% |  |  |
| 131 | **NOK: 14.2, 14.3, 15.1, 15.2** |  | 2026-10-02 A |  | 38% → 100% | 44d → none | was named NOK: MT_14.2, MT_14.3, MT_15.1, MT_15.2 |
| 134 | Desarrollo |  | 2026-09-25 A |  | 90% → 100% | 0d → none |  |
| 135 | Pruebas Internas |  | 2026-09-25 A |  | 90% → 100% | 0d → none |  |
| 136 | Entrega y despliegue en QA | 2026-09-25 A | 2026-09-28 A |  | 0% → 100% | 48d → none |  |
| 137 | Induccion de HU | 2026-09-25 A | 2026-09-28 A |  | 0% → 100% | 0d → none |  |
| 138 | Ejecucion de pruebas ciclo 1 | 2026-09-28 A | 2026-09-29 A |  | 0% → 100% | 0d → none |  |
| 139 | Reuniones de Revisión UAT | 2026-09-29 A | 2026-09-30 A |  | 0% → 100% | 0d → none |  |
| 140 | Correcciones y despliegue | 2026-09-30 A | 2026-10-01 A |  | 0% → 100% | 44d → none |  |
| 141 | Ejecucion de pruebas ciclo 2 | 2026-10-01 A | 2026-10-02 A |  | 0% → 100% | 44d → none |  |
| 142 | **HU Garantía: 11, 19, 21, 25, 26, 27, 29, 32, 33, 38, 39** |  |  |  | 4% → 7% |  | was named HU Garantía: MT_11, MT_19, MT_21, MT_25, MT_26, MT_27, MT_29, MT_32, MT_33, MT_38, MT_39 |
| 145 | Desarrollo | 2026-09-30 A |  |  | 0% → 5% |  |  |
